How a schedule from GanttProject changed from version to version. A marks actual dates.

## Version 1 (saved 2016-07-05)

Note of the change: 百思陵园相关设计

| ID | WBS | Task | Duration | Start | Finish | Complete |
| --- | --- | --- | --- | --- | --- | --- |
| 1 | 1 | **百思陵园** | 85d | 2016-06-27 | 2016-09-19 | 4% |
| 2 | 1.1 | **设计** | 50d | 2016-06-27 | 2016-08-15 | 11% |
| 3 |  | 低保真 | 5d | 2016-06-27 | 2016-07-01 | 100% |
| 4 |  | 高保真 | 23d | 2016-07-04 | 2016-07-26 |  |
| 5 |  | 数据模型 | 3d | 2016-07-05 | 2016-07-07 | 100% |
| 6 |  | 重要功能业务逻辑 | 40d | 2016-07-07 | 2016-08-15 |  |
| 7 | 1.2 | **编码** | 82d | 2016-06-30 | 2016-09-19 |  |
| 8 |  | U3D | 1d | 2016-06-30 | 2016-06-30 |  |
| 9 | 1.2.2 | **JAVA** | 82d | 2016-06-30 | 2016-09-19 |  |
| 10 | 1.2.2.1 | **接口功能** | 82d | 2016-06-30 | 2016-09-19 |  |
| 11 | 1.2.2.1.1 | **会员** | 47d | 2016-06-30 | 2016-08-15 |  |
| 12 |  | 会员账号注册 | 5d | 2016-08-11 | 2016-08-15 |  |
| 13 |  | 会员登录 | 5d | 2016-08-11 | 2016-08-15 |  |
| 14 |  | 会员登出 | 5d | 2016-08-11 | 2016-08-15 |  |
| 15 |  | 会员资料查询 | 5d | 2016-08-11 | 2016-08-15 |  |
| 16 |  | 会员资料修改 | 5d | 2016-08-11 | 2016-08-15 |  |
| 17 | 1.2.2.1.1.6 | **钱包** | 1d | 2016-06-30 | 2016-06-30 |  |
| 18 |  | 查询钱包信息 | 1d | 2016-06-30 | 2016-06-30 |  |
| 19 |  | 现金充值 | 1d | 2016-06-30 | 2016-06-30 |  |
| 20 | 1.2.2.1.1.7 | **我的订单** | 1d | 2016-06-30 | 2016-06-30 |  |
| 21 |  | 分页列表查询 | 1d | 2016-06-30 | 2016-06-30 |  |
| 22 |  | 列表快捷筛选 | 1d | 2016-06-30 | 2016-06-30 |  |
| 23 |  | 订单详情 | 1d | 2016-06-30 | 2016-06-30 |  |
| 24 |  | 订单支付 | 1d | 2016-06-30 | 2016-06-30 |  |
| 25 | 1.2.2.1.1.8 | **我的留言** | 1d | 2016-06-30 | 2016-06-30 |  |
| 26 |  | 分页列表查询 | 1d | 2016-06-30 | 2016-06-30 |  |
| 27 |  | 留言删除 | 1d | 2016-06-30 | 2016-06-30 |  |
| 28 | 1.2.2.1.1.9 | **我的店铺** | 1d | 2016-06-30 | 2016-06-30 |  |
| 29 |  | 分页查询已发布商品 | 1d | 2016-06-30 | 2016-06-30 |  |
| 30 |  | 商品详情 | 1d | 2016-06-30 | 2016-06-30 |  |
| 31 |  | 分页查询快捷筛选 | 1d | 2016-06-30 | 2016-06-30 |  |
| 32 |  | 发布商品 | 1d | 2016-06-30 | 2016-06-30 |  |
| 33 |  | 下架商品 | 1d | 2016-06-30 | 2016-06-30 |  |
| 34 | 1.2.2.1.1.9.6 | **店铺订单** | 1d | 2016-06-30 | 2016-06-30 |  |
| 35 |  | 分页列表查询销售订单 | 1d | 2016-06-30 | 2016-06-30 |  |
| 36 |  | 订单详情 | 1d | 2016-06-30 | 2016-06-30 |  |
| 37 |  | 订单销售总额统计 | 1d | 2016-06-30 | 2016-06-30 |  |
| 38 | 1.2.2.1.1.10 | **背包** | 1d | 2016-06-30 | 2016-06-30 |  |
| 39 |  | 查询商品分类集合 | 1d | 2016-06-30 | 2016-06-30 |  |
| 40 |  | 根据分类查询商品集合分页列表 | 1d | 2016-06-30 | 2016-06-30 |  |
| 41 |  | 查询商品详情 | 1d | 2016-06-30 | 2016-06-30 |  |
| 42 |  | 商品使用 | 1d | 2016-06-30 | 2016-06-30 |  |
| 43 | 1.2.2.1.2 | **陵园** | 82d | 2016-06-30 | 2016-09-19 |  |
| 44 |  | 查找陵园基本信息 | 1d | 2016-08-20 | 2016-08-20 |  |
| 45 |  | 非公开陵园密码进入 | 1d | 2016-08-20 | 2016-08-20 |  |
| 46 |  | 背景音乐集合查询 | 1d | 2016-08-22 | 2016-08-22 |  |
| 47 |  | 统计陵园容量消耗明细 | 1d | 2016-08-22 | 2016-08-22 |  |
| 48 | 1.2.2.1.2.5 | **背景音乐管理** | 1d | 2016-06-30 | 2016-06-30 |  |
| 49 |  | 音乐分页列表 | 1d | 2016-06-30 | 2016-06-30 |  |
| 50 |  | 音乐上传 | 1d | 2016-06-30 | 2016-06-30 |  |
| 51 |  | 音乐删除 | 1d | 2016-06-30 | 2016-06-30 |  |
| 52 | 1.2.2.1.2.6 | **授权代管理** | 1d | 2016-06-30 | 2016-06-30 |  |
| 53 |  | 对他人授予权限 | 1d | 2016-06-30 | 2016-06-30 |  |
| 54 |  | 分页查询已授权列表 | 1d | 2016-06-30 | 2016-06-30 |  |
| 55 |  | 权限回收 | 1d | 2016-06-30 | 2016-06-30 |  |
| 56 | 1.2.2.1.2.7 | **公告管理** | 1d | 2016-06-30 | 2016-06-30 |  |
| 57 |  | 分页内容查询 | 1d | 2016-06-30 | 2016-06-30 |  |
| 58 |  | 增加公告信息 | 1d | 2016-06-30 | 2016-06-30 |  |
| 59 |  | 修改编辑公告 | 1d | 2016-06-30 | 2016-06-30 |  |
| 60 |  | 删除公告 | 1d | 2016-06-30 | 2016-06-30 |  |
| 61 | 1.2.2.1.2.8 | **动物园** | 1d | 2016-06-30 | 2016-06-30 |  |
| 62 |  | 已有动物集合查询 | 1d | 2016-06-30 | 2016-06-30 |  |
| 63 |  | 动物详情查询 | 1d | 2016-06-30 | 2016-06-30 |  |
| 64 |  | 查询背包动物集合 | 1d | 2016-06-30 | 2016-06-30 |  |
| 65 |  | 背包动物饲养 | 1d | 2016-06-30 | 2016-06-30 |  |
| 66 |  | 喂养 | 1d | 2016-06-30 | 2016-06-30 |  |
| 67 |  | 收取 | 1d | 2016-06-30 | 2016-06-30 |  |
| 68 | 1.2.2.1.2.9 | **植物园** | 1d | 2016-06-30 | 2016-06-30 |  |
| 69 |  | 已有植物集合查询 | 1d | 2016-06-30 | 2016-06-30 |  |
| 70 |  | 植物详情查询 | 1d | 2016-06-30 | 2016-06-30 |  |

| ID | WBS | Task | Duration | Start | Finish |
| --- | --- | --- | --- | --- | --- |
| 71 |  | 查询背包植物集合 | 1d | 2016-06-30 | 2016-06-30 |
| 72 |  | 背包植物种植 | 1d | 2016-06-30 | 2016-06-30 |
| 73 |  | 施肥 | 1d | 2016-06-30 | 2016-06-30 |
| 74 |  | 收割 | 1d | 2016-06-30 | 2016-06-30 |
| 75 | 1.2.2.1.2.10 | **宠物墓园** | 1d | 2016-06-30 | 2016-06-30 |
| 76 |  | 查询宠物墓碑集合 | 1d | 2016-06-30 | 2016-06-30 |
| 77 |  | 创建宠物墓碑 | 1d | 2016-06-30 | 2016-06-30 |
| 78 |  | 删除宠物墓碑 | 1d | 2016-06-30 | 2016-06-30 |
| 79 |  | 墓碑修改（单人升多人、禁止多人降单人） | 1d | 2016-06-30 | 2016-06-30 |
| 80 | 1.2.2.1.2.10.5 | **功能墙** | 1d | 2016-06-30 | 2016-06-30 |
| 81 | 1.2.2.1.2.10.5.1 | **纪念动态** | 1d | 2016-06-30 | 2016-06-30 |
| 82 |  | 分页查询列表 | 1d | 2016-06-30 | 2016-06-30 |
| 83 |  | 保存纪念动态（提供接口、交由界面触发） | 1d | 2016-06-30 | 2016-06-30 |
| 84 | 1.2.2.1.2.10.5.2 | **宠物相册** | 1d | 2016-06-30 | 2016-06-30 |
| 85 |  | 查询相册集合 | 1d | 2016-06-30 | 2016-06-30 |
| 86 |  | 分页查询相片集合 | 1d | 2016-06-30 | 2016-06-30 |
| 87 |  | 查询相片详情 | 1d | 2016-06-30 | 2016-06-30 |
| 88 |  | 创建相册 | 1d | 2016-06-30 | 2016-06-30 |
| 89 |  | 添加相片 | 1d | 2016-06-30 | 2016-06-30 |
| 90 |  | 删除相册 | 1d | 2016-06-30 | 2016-06-30 |
| 91 |  | 删除相片 | 1d | 2016-06-30 | 2016-06-30 |
| 92 | 1.2.2.1.2.10.5.3 | **宠物视频** | 1d | 2016-06-30 | 2016-06-30 |
| 93 |  | 查询视频目录集合 | 1d | 2016-06-30 | 2016-06-30 |
| 94 |  | 分页查询视频集合 | 1d | 2016-06-30 | 2016-06-30 |
| 95 |  | 查询视频详情 | 1d | 2016-06-30 | 2016-06-30 |
| 96 |  | 创建视频目录 | 1d | 2016-06-30 | 2016-06-30 |
| 97 |  | 增加视频 | 1d | 2016-06-30 | 2016-06-30 |
| 98 |  | 删除视频目录 | 1d | 2016-06-30 | 2016-06-30 |
| 99 |  | 删除视频 | 1d | 2016-06-30 | 2016-06-30 |
| 100 | 1.2.2.1.2.11 | **人物墓园** | 26d | 2016-08-25 | 2016-09-19 |
| 101 |  | 查询人物墓碑集合 | 2d | 2016-08-25 | 2016-08-26 |
| 102 |  | 创建人物墓碑 | 2d | 2016-08-25 | 2016-08-26 |
| 103 |  | 删除人物墓碑 | 2d | 2016-08-25 | 2016-08-26 |
| 104 |  | 墓碑修改（单人升多人、禁止多人降单人） | 2d | 2016-08-25 | 2016-08-26 |
| 105 | 1.2.2.1.2.11.5 | **功能墙** | 22d | 2016-08-29 | 2016-09-19 |
| 106 | 1.2.2.1.2.11.5.1 | **生平介绍** | 2d | 2016-08-29 | 2016-08-30 |
| 107 |  | 查询介绍 | 2d | 2016-08-29 | 2016-08-30 |
| 108 |  | 添加介绍 | 2d | 2016-08-29 | 2016-08-30 |
| 109 |  | 修改介绍 | 2d | 2016-08-29 | 2016-08-30 |
| 110 | 1.2.2.1.2.11.5.2 | **遗言遗愿** | 2d | 2016-08-31 | 2016-09-01 |
| 111 |  | 查询 | 2d | 2016-08-31 | 2016-09-01 |
| 112 |  | 添加 | 2d | 2016-08-31 | 2016-09-01 |
| 113 |  | 修改 | 2d | 2016-08-31 | 2016-09-01 |
| 114 | 1.2.2.1.2.11.5.3 | **参祭留言** | 2d | 2016-09-02 | 2016-09-03 |
| 115 |  | 分页查询集合 | 2d | 2016-09-02 | 2016-09-03 |
| 116 |  | 添加留言 | 2d | 2016-09-02 | 2016-09-03 |
| 117 |  | 回复留言 | 2d | 2016-09-02 | 2016-09-03 |
| 118 |  | 删除留言 | 2d | 2016-09-02 | 2016-09-03 |
| 119 | 1.2.2.1.2.11.5.4 | **纪念动态** | 2d | 2016-09-05 | 2016-09-06 |
| 120 |  | 分页查询列表 | 2d | 2016-09-05 | 2016-09-06 |
| 121 |  | 保存纪念动态（提供接口、交由界面触发） | 2d | 2016-09-05 | 2016-09-06 |
| 122 | 1.2.2.1.2.11.5.5 | **祭文悼词** | 2d | 2016-09-07 | 2016-09-08 |
| 123 |  | 分页查询集合 | 2d | 2016-09-07 | 2016-09-08 |
| 124 |  | 查询详情 | 2d | 2016-09-07 | 2016-09-08 |
| 125 |  | 添加 | 2d | 2016-09-07 | 2016-09-08 |
| 126 | 1.2.2.1.2.11.5.6 | **人物相册** | 4d | 2016-09-09 | 2016-09-12 |
| 127 |  | 查询相册集合 | 4d | 2016-09-09 | 2016-09-12 |
| 128 |  | 分页查询相片集合 | 4d | 2016-09-09 | 2016-09-12 |
| 129 |  | 查询相片详情 | 4d | 2016-09-09 | 2016-09-12 |
| 130 |  | 创建相册 | 4d | 2016-09-09 | 2016-09-12 |
| 131 |  | 添加相片 | 4d | 2016-09-09 | 2016-09-12 |
| 132 |  | 删除相册 | 4d | 2016-09-09 | 2016-09-12 |
| 133 |  | 删除相片 | 4d | 2016-09-09 | 2016-09-12 |
| 134 | 1.2.2.1.2.11.5.7 | **人物视频** | 3d | 2016-09-13 | 2016-09-15 |
| 135 |  | 查询视频目录集合 | 3d | 2016-09-13 | 2016-09-15 |
| 136 |  | 分页查询视频集合 | 3d | 2016-09-13 | 2016-09-15 |
| 137 |  | 查询视频详情 | 3d | 2016-09-13 | 2016-09-15 |
| 138 |  | 创建视频目录 | 3d | 2016-09-13 | 2016-09-15 |
| 139 |  | 增加视频 | 3d | 2016-09-13 | 2016-09-15 |
| 140 |  | 删除视频目录 | 3d | 2016-09-13 | 2016-09-15 |

| ID | WBS | Task | Duration | Start | Finish |
| --- | --- | --- | --- | --- | --- |
| 141 |  | 删除视频 | 3d | 2016-09-13 | 2016-09-15 |
| 142 | 1.2.2.1.2.11.5.8 | **生前作品** | 4d | 2016-09-16 | 2016-09-19 |
| 143 |  | 查询作品目录集合 | 4d | 2016-09-16 | 2016-09-19 |
| 144 |  | 分页查询作品集合 | 4d | 2016-09-16 | 2016-09-19 |
| 145 |  | 查询作品详情 | 4d | 2016-09-16 | 2016-09-19 |
| 146 |  | 创建作品目录 | 4d | 2016-09-16 | 2016-09-19 |
| 147 |  | 添加作品 | 4d | 2016-09-16 | 2016-09-19 |
| 148 |  | 删除作品 | 4d | 2016-09-16 | 2016-09-19 |
| 149 |  | 删除作品目录 | 4d | 2016-09-16 | 2016-09-19 |
| 150 |  | 添加陵园 | 1d | 2016-08-16 | 2016-08-16 |
| 151 |  | 根据地区查询陵园集合 | 2d | 2016-08-17 | 2016-08-18 |
| 152 |  | 根据陵园编号查询归属地陵园集合 | 2d | 2016-08-17 | 2016-08-18 |
| 153 |  | 根据会员信息查询我的陵园集合 | 1d | 2016-08-19 | 2016-08-19 |
| 154 |  | 公众人物祭奠申请 | 1d | 2016-08-19 | 2016-08-19 |
| 155 | 1.2.2.1.3 | **社区** | 1d | 2016-06-30 | 2016-06-30 |
| 156 |  | 传送门 | 1d | 2016-06-30 | 2016-06-30 |
| 157 | 1.2.2.1.4 | **商城** | 1d | 2016-06-30 | 2016-06-30 |
| 158 |  | 商品分类集合查询 | 1d | 2016-06-30 | 2016-06-30 |
| 159 |  | 分页查询分类商品集合 | 1d | 2016-06-30 | 2016-06-30 |
| 160 |  | 商品详情查询 | 1d | 2016-06-30 | 2016-06-30 |
| 161 |  | 加入购物车 | 1d | 2016-06-30 | 2016-06-30 |
| 162 |  | 移出购物车 | 1d | 2016-06-30 | 2016-06-30 |
| 163 |  | 购物车转订单 | 1d | 2016-06-30 | 2016-06-30 |
| 164 | 1.2.2.2 | **后台功能** | 59d | 2016-06-30 | 2016-08-27 |
| 165 |  | 维护U3D登录用户session | 4d | 2016-07-08 | 2016-07-11 |
| 166 |  | IM | 6d | 2016-07-11 | 2016-07-16 |
| 167 |  | 多人在线用户分管 | 3d | 2016-07-18 | 2016-07-20 |
| 168 |  | 多人在线数据转发 | 3d | 2016-07-21 | 2016-07-23 |
| 169 |  | 手机短信API接入 | 3d | 2016-07-25 | 2016-07-27 |
| 170 |  | 管理员登录 | 1d | 2016-07-28 | 2016-07-28 |
| 171 |  | 管理员登出 | 1d | 2016-07-28 | 2016-07-28 |
| 172 | 1.2.2.2.8 | **系统用户权限管理** | 5d | 2016-07-29 | 2016-08-02 |
| 173 | 1.2.2.2.8.1 | **系统角色管理** | 2d | 2016-07-29 | 2016-07-30 |
| 174 | 1.2.2.2.8.1.1 | **增加** | 2d | 2016-07-29 | 2016-07-30 |
| 175 |  | 绑定菜单 | 2d | 2016-07-29 | 2016-07-30 |
| 176 | 1.2.2.2.8.1.2 | **修改** | 2d | 2016-07-29 | 2016-07-30 |
| 177 |  | 修改绑定菜单 | 2d | 2016-07-29 | 2016-07-30 |
| 178 | 1.2.2.2.8.1.3 | **删除** | 2d | 2016-07-29 | 2016-07-30 |
| 179 |  | 删除绑定菜单数据 | 2d | 2016-07-29 | 2016-07-30 |
| 180 | 1.2.2.2.8.1.4 | **分页列表查询** | 2d | 2016-07-29 | 2016-07-30 |
| 181 |  | 列表快捷筛选 | 2d | 2016-07-29 | 2016-07-30 |
| 182 |  | 内容详情 | 2d | 2016-07-29 | 2016-07-30 |
| 183 | 1.2.2.2.8.2 | **系统用户管理** | 2d | 2016-08-01 | 2016-08-02 |
| 184 | 1.2.2.2.8.2.1 | **增加用户** | 2d | 2016-08-01 | 2016-08-02 |
| 185 |  | 绑定角色 | 2d | 2016-08-01 | 2016-08-02 |
| 186 | 1.2.2.2.8.2.2 | **修改用户** | 2d | 2016-08-01 | 2016-08-02 |
| 187 |  | 编辑绑定角色 | 2d | 2016-08-01 | 2016-08-02 |
| 188 | 1.2.2.2.8.2.3 | **删除用户** | 2d | 2016-08-01 | 2016-08-02 |
| 189 |  | 删除绑定角色 | 2d | 2016-08-01 | 2016-08-02 |
| 190 | 1.2.2.2.8.2.4 | **分页列表查询** | 2d | 2016-08-01 | 2016-08-02 |
| 191 |  | 列表快捷筛选 | 2d | 2016-08-01 | 2016-08-02 |
| 192 |  | 内容详情 | 2d | 2016-08-01 | 2016-08-02 |
| 193 | 1.2.2.2.9 | **数据管理** | 59d | 2016-06-30 | 2016-08-27 |
| 194 | 1.2.2.2.9.1 | **模型及商品分类管理** | 2d | 2016-08-03 | 2016-08-04 |
| 195 |  | 增加分类 | 2d | 2016-08-03 | 2016-08-04 |
| 196 |  | 修改分类 | 2d | 2016-08-03 | 2016-08-04 |
| 197 |  | 删除分类 | 2d | 2016-08-03 | 2016-08-04 |
| 198 |  | 分页列表查找 | 2d | 2016-08-03 | 2016-08-04 |
| 199 | 1.2.2.2.9.2 | **模型管理** | 3d | 2016-08-04 | 2016-08-06 |
| 200 | 1.2.2.2.9.2.1 | **分页模型列表** | 3d | 2016-08-04 | 2016-08-06 |
| 201 |  | 快捷筛选 | 3d | 2016-08-04 | 2016-08-06 |
| 202 |  | 模型详情 | 3d | 2016-08-04 | 2016-08-06 |
| 203 | 1.2.2.2.9.2.3 | **增加模型** | 3d | 2016-08-04 | 2016-08-06 |
| 204 |  | 绑定模型分类 | 3d | 2016-08-04 | 2016-08-06 |
| 205 | 1.2.2.2.9.2.4 | **修改模型** | 3d | 2016-08-04 | 2016-08-06 |
| 206 |  | 修改绑定模型分类 | 3d | 2016-08-04 | 2016-08-06 |
| 207 | 1.2.2.2.9.2.5 | **删除模型** | 3d | 2016-08-04 | 2016-08-06 |
| 208 |  | 删除绑定模型分类 | 3d | 2016-08-04 | 2016-08-06 |
| 209 | 1.2.2.2.9.3 | **特殊节日管理** | 3d | 2016-08-08 | 2016-08-10 |
| 210 |  | 分页列表查询 | 3d | 2016-08-08 | 2016-08-10 |

| ID | WBS | Task | Duration | Start | Finish |
| --- | --- | --- | --- | --- | --- |
| 211 |  | 增加节日 | 3d | 2016-08-08 | 2016-08-10 |
| 212 |  | 删除节日 | 3d | 2016-08-08 | 2016-08-10 |
| 213 |  | 节日前短信推送 | 3d | 2016-08-08 | 2016-08-10 |
| 214 | 1.2.2.2.9.4 | **陵园管理** | 5d | 2016-08-23 | 2016-08-27 |
| 215 |  | 分页列表查询 | 2d | 2016-08-23 | 2016-08-24 |
| 216 |  | 内容详情 | 2d | 2016-08-23 | 2016-08-24 |
| 217 |  | 分页列表查询陵园墓园纪念人 | 1d | 2016-08-27 | 2016-08-27 |
| 218 |  | 陵园墓园纪念人详情 | 1d | 2016-08-27 | 2016-08-27 |
| 219 | 1.2.2.2.9.5 | **商城管理** | 1d | 2016-06-30 | 2016-06-30 |
| 220 | 1.2.2.2.9.5.1 | **商品管理** | 1d | 2016-06-30 | 2016-06-30 |
| 221 | 1.2.2.2.9.5.1.1 | **分页列表查找** | 1d | 2016-06-30 | 2016-06-30 |
| 222 |  | 快捷筛选 | 1d | 2016-06-30 | 2016-06-30 |
| 223 |  | 内容详情 | 1d | 2016-06-30 | 2016-06-30 |
| 224 | 1.2.2.2.9.5.1.3 | **增加商品** | 1d | 2016-06-30 | 2016-06-30 |
| 225 |  | 绑定模型 | 1d | 2016-06-30 | 2016-06-30 |
| 226 |  | 绑定商品分类 | 1d | 2016-06-30 | 2016-06-30 |
| 227 | 1.2.2.2.9.5.1.4 | **修改商品** | 1d | 2016-06-30 | 2016-06-30 |
| 228 |  | 编辑模型 | 1d | 2016-06-30 | 2016-06-30 |
| 229 |  | 编辑分类 | 1d | 2016-06-30 | 2016-06-30 |
| 230 | 1.2.2.2.9.5.1.5 | **删除商品** | 1d | 2016-06-30 | 2016-06-30 |
| 231 |  | 删除模型、分类关系 | 1d | 2016-06-30 | 2016-06-30 |
| 232 | 1.2.2.2.9.5.2 | **订单管理** | 1d | 2016-06-30 | 2016-06-30 |
| 233 | 1.2.2.2.9.5.2.1 | **分页列表查找** | 1d | 2016-06-30 | 2016-06-30 |
| 234 |  | 快捷筛选 | 1d | 2016-06-30 | 2016-06-30 |
| 235 |  | 内容详情 | 1d | 2016-06-30 | 2016-06-30 |
| 236 | 1.2.2.2.9.6 | **会员管理** | 1d | 2016-06-30 | 2016-06-30 |
| 237 | 1.2.2.2.9.6.1 | **分页会员列表** | 1d | 2016-06-30 | 2016-06-30 |
| 238 |  | 管理员筛选 | 1d | 2016-06-30 | 2016-06-30 |
| 239 |  | 会员详情 | 1d | 2016-06-30 | 2016-06-30 |
| 240 |  | 授权管理员 | 1d | 2016-06-30 | 2016-06-30 |
| 241 | 1.2.2.2.9.7 | **公众人物管理员** | 1d | 2016-06-30 | 2016-06-30 |
| 242 | 1.2.2.2.9.7.1 | **分页会员申请列表** | 1d | 2016-06-30 | 2016-06-30 |
| 243 |  | 同意、驳回、未处理快捷筛选 | 1d | 2016-06-30 | 2016-06-30 |
| 244 |  | 申请详情 | 1d | 2016-06-30 | 2016-06-30 |
| 245 |  | 意见处理（同意、驳回） | 1d | 2016-06-30 | 2016-06-30 |
| 246 |  | 测试 | 1d | 2016-06-30 | 2016-06-30 |
| 247 |  | 部署 | 1d | 2016-06-30 | 2016-06-30 |

## Version 2 (saved 2016-07-15)

Note of the change: 百思陵园相关设计

Last finish stays 2016-09-19. Complete tasks 2 → 19.

Changed:

| ID | Task | Complete |
| --- | --- | --- |
| 1 | **百思陵园** | 4% → 13% |
| 7 | **编码** | 0% → 15% |
| 9 | **JAVA** | 0% → 16% |
| 10 | **接口功能** | 0% → 17% |
| 11 | **会员** | 0% → 50% |
| 12 | 会员账号注册 | 0% → 100% |
| 13 | 会员登录 | 0% → 100% |
| 14 | 会员登出 | 0% → 100% |
| 164 | **后台功能** | 0% → 16% |
| 165 | 维护U3D登录用户session | 0% → 100% |
| 169 | 手机短信API接入 | 0% → 100% |
| 170 | 管理员登录 | 0% → 100% |
| 171 | 管理员登出 | 0% → 100% |
| 172 | **系统用户权限管理** | 0% → 100% |
| 173 | **系统角色管理** | 0% → 100% |
| 174 | **增加** | 0% → 100% |
| 175 | 绑定菜单 | 0% → 100% |
| 176 | **修改** | 0% → 100% |
| 177 | 修改绑定菜单 | 0% → 100% |
| 178 | **删除** | 0% → 100% |
| 179 | 删除绑定菜单数据 | 0% → 100% |
| 180 | **分页列表查询** | 0% → 100% |
| 181 | 列表快捷筛选 | 0% → 100% |
| 182 | 内容详情 | 0% → 100% |
| 183 | **系统用户管理** | 0% → 100% |
| 184 | **增加用户** | 0% → 100% |
| 185 | 绑定角色 | 0% → 100% |
| 186 | **修改用户** | 0% → 100% |
| 187 | 编辑绑定角色 | 0% → 100% |
| 188 | **删除用户** | 0% → 100% |
| 189 | 删除绑定角色 | 0% → 100% |
| 190 | **分页列表查询** | 0% → 100% |
| 191 | 列表快捷筛选 | 0% → 100% |
| 192 | 内容详情 | 0% → 100% |

## Version 3 (saved 2016-07-19)

Note of the change: 修改DB设计及更新任务计划

Last finish stays 2016-09-19. Complete tasks 19 → 25.

Changed:

| ID | Task | Complete |
| --- | --- | --- |
| 1 | **百思陵园** | 13% → 16% |
| 7 | **编码** | 15% → 21% |
| 9 | **JAVA** | 16% → 22% |
| 10 | **接口功能** | 17% → 28% |
| 43 | **陵园** | 0% → 16% |
| 44 | 查找陵园基本信息 | 0% → 100% |
| 150 | 添加陵园 | 0% → 100% |
| 151 | 根据地区查询陵园集合 | 0% → 100% |
| 152 | 根据陵园编号查询归属地陵园集合 | 0% → 100% |
| 153 | 根据会员信息查询我的陵园集合 | 0% → 100% |
| 155 | **社区** | 0% → 100% |
| 156 | 传送门 | 0% → 100% |

## Version 4 (saved 2016-08-03)

Note of the change: 更新进度

Last finish stays 2016-09-19. Complete tasks 25 → 35.

Changed:

| ID | Task | Complete |
| --- | --- | --- |
| 1 | **百思陵园** | 16% → 24% |
| 7 | **编码** | 21% → 34% |
| 9 | **JAVA** | 22% → 35% |
| 164 | **后台功能** | 16% → 45% |
| 166 | IM | 0% → 100% |
| 167 | 多人在线用户分管 | 0% → 100% |
| 168 | 多人在线数据转发 | 0% → 100% |
| 193 | **数据管理** | 0% → 22% |
| 199 | **模型管理** | 0% → 100% |
| 200 | **分页模型列表** | 0% → 100% |
| 201 | 快捷筛选 | 0% → 100% |
| 202 | 模型详情 | 0% → 100% |
| 203 | **增加模型** | 0% → 100% |
| 204 | 绑定模型分类 | 0% → 100% |
| 205 | **修改模型** | 0% → 100% |
| 206 | 修改绑定模型分类 | 0% → 100% |
| 207 | **删除模型** | 0% → 100% |
| 208 | 删除绑定模型分类 | 0% → 100% |
| 236 | **会员管理** | 0% → 66% |
| 237 | **分页会员列表** | 0% → 100% |
| 238 | 管理员筛选 | 0% → 100% |
| 239 | 会员详情 | 0% → 100% |

## Version 5 (saved 2016-08-16)

Note of the change: 更新进度及设计

Last finish stays 2016-09-19. Complete tasks 35 → 46.

Changed:

| ID | Task | Complete |
| --- | --- | --- |
| 1 | **百思陵园** | 24% → 31% |
| 7 | **编码** | 34% → 45% |
| 9 | **JAVA** | 35% → 46% |
| 10 | **接口功能** | 28% → 31% |
| 43 | **陵园** | 16% → 20% |
| 45 | 非公开陵园密码进入 | 0% → 100% |
| 56 | **公告管理** | 0% → 100% |
| 57 | 分页内容查询 | 0% → 100% |
| 58 | 增加公告信息 | 0% → 100% |
| 59 | 修改编辑公告 | 0% → 100% |
| 60 | 删除公告 | 0% → 100% |
| 164 | **后台功能** | 45% → 69% |
| 193 | **数据管理** | 22% → 56% |
| 194 | **模型及商品分类管理** | 0% → 100% |
| 195 | 增加分类 | 0% → 100% |
| 196 | 修改分类 | 0% → 100% |
| 197 | 删除分类 | 0% → 100% |
| 198 | 分页列表查找 | 0% → 100% |
| 214 | **陵园管理** | 0% → 66% |
| 215 | 分页列表查询 | 0% → 100% |
| 216 | 内容详情 | 0% → 100% |

## Version 6 (saved 2016-08-17)

Note of the change: 更新进度

Last finish stays 2016-09-19. Complete tasks 46 → 49.

Changed:

| ID | Task | Complete |
| --- | --- | --- |
| 1 | **百思陵园** | 31% → 34% |
| 7 | **编码** | 45% → 50% |
| 9 | **JAVA** | 46% → 51% |
| 164 | **后台功能** | 69% → 79% |
| 193 | **数据管理** | 56% → 70% |
| 209 | **特殊节日管理** | 0% → 75% |
| 210 | 分页列表查询 | 0% → 100% |
| 211 | 增加节日 | 0% → 100% |
| 212 | 删除节日 | 0% → 100% |

## Version 7 (saved 2016-08-23)

Note of the change: 更新设计

Last finish stays 2016-09-19. Complete tasks 49 → 59.

Changed:

| ID | Task | Complete |
| --- | --- | --- |
| 1 | **百思陵园** | 34% → 40% |
| 7 | **编码** | 50% → 59% |
| 9 | **JAVA** | 51% → 60% |
| 10 | **接口功能** | 31% → 48% |
| 11 | **会员** | 50% → 86% |
| 15 | 会员资料查询 | 0% → 100% |
| 16 | 会员资料修改 | 0% → 100% |
| 17 | **钱包** | 0% → 100% |
| 18 | 查询钱包信息 | 0% → 100% |
| 19 | 现金充值 | 0% → 100% |
| 43 | **陵园** | 20% → 27% |
| 46 | 背景音乐集合查询 | 0% → 100% |
| 48 | **背景音乐管理** | 0% → 66% |
| 49 | 音乐分页列表 | 0% → 100% |
| 51 | 音乐删除 | 0% → 100% |
| 52 | **授权代管理** | 0% → 100% |
| 53 | 对他人授予权限 | 0% → 100% |
| 54 | 分页查询已授权列表 | 0% → 100% |
| 55 | 权限回收 | 0% → 100% |

## Version 8 (saved 2016-10-17)

Note of the change: 修改商城系统

Last finish stays 2016-09-19. Complete tasks 59 → 65.

Changed:

| ID | Task | Complete |
| --- | --- | --- |
| 1 | **百思陵园** | 40% → 43% |
| 7 | **编码** | 59% → 65% |
| 9 | **JAVA** | 60% → 66% |
| 164 | **后台功能** | 79% → 92% |
| 193 | **数据管理** | 70% → 89% |
| 214 | **陵园管理** | 66% → 100% |
| 217 | 分页列表查询陵园墓园纪念人 | 0% → 100% |
| 218 | 陵园墓园纪念人详情 | 0% → 100% |
| 236 | **会员管理** | 66% → 100% |
| 240 | 授权管理员 | 0% → 100% |
| 241 | **公众人物管理员** | 0% → 100% |
| 242 | **分页会员申请列表** | 0% → 100% |
| 243 | 同意、驳回、未处理快捷筛选 | 0% → 100% |
| 244 | 申请详情 | 0% → 100% |
| 245 | 意见处理（同意、驳回） | 0% → 100% |

## Version 9 (saved 2016-10-20)

Note of the change: 更新数据设计和工作进度

Last finish stays 2016-09-19. Complete tasks 65 → 97.

Added:

| ID | Task | Duration | Start | Finish |
| --- | --- | --- | --- | --- |
| 27 | 我发出的留言分页列表 | 1d | 2016-06-30 | 2016-06-30 |
| 110 | 添加纪念人 | 2d | 2016-08-29 | 2016-08-30 |
| 111 | 删除纪念人 | 1d | 2016-06-30 | 2016-06-30 |
| 163 | 查询购物车内容 | 1d | 2016-06-30 | 2016-06-30 |

Removed: 108 添加介绍

Changed:

| ID | Task | Start | Duration | Complete | Other |
| --- | --- | --- | --- | --- | --- |
| 1 | **百思陵园** |  |  | 43% → 90% |  |
| 2 | **设计** |  |  | 11% → 100% |  |
| 4 | 高保真 |  |  | 0% → 100% |  |
| 6 | 重要功能业务逻辑 |  |  | 0% → 100% |  |
| 7 | **编码** |  |  | 65% → 87% |  |
| 8 | U3D |  |  | 0% → 100% |  |
| 9 | **JAVA** |  |  | 66% → 87% |  |
| 10 | **接口功能** |  |  | 48% → 84% |  |
| 11 | **会员** |  |  | 86% → 99% |  |
| 20 | **我的订单** |  |  | 0% → 97% |  |
| 21 | 分页列表查询 |  |  | 0% → 100% |  |
| 22 | 列表快捷筛选 |  |  | 0% → 100% |  |
| 23 | 订单详情 |  |  | 0% → 100% |  |
| 24 | 订单支付 |  |  | 0% → 90% |  |
| 25 | **我的留言** |  |  | 0% → 100% |  |
| 26 | 我接受的留言分页列表查询 |  |  | 0% → 100% | was named 分页列表查询 |
| 28 | 留言删除（我发出的） |  |  | 0% → 100% | was named 留言删除 |
| 29 | **我的店铺** |  |  | 0% → 100% |  |
| 30 | 分页查询已发布商品 |  |  | 0% → 100% |  |
| 31 | 商品详情 |  |  | 0% → 100% |  |
| 32 | 分页查询快捷筛选 |  |  | 0% → 100% |  |
| 33 | 发布商品 |  |  | 0% → 100% |  |
| 34 | 下架商品 |  |  | 0% → 100% |  |
| 35 | **店铺订单** |  |  | 0% → 100% |  |
| 36 | 分页列表查询销售订单 |  |  | 0% → 100% |  |
| 37 | 订单详情 |  |  | 0% → 100% |  |
| 38 | 订单销售总额统计 |  |  | 0% → 100% |  |
| 39 | **背包** |  |  | 0% → 75% |  |
| 40 | 查询商品分类集合 |  |  | 0% → 100% |  |
| 41 | 根据分类查询商品集合分页列表 |  |  | 0% → 100% |  |
| 42 | 查询商品详情 |  |  | 0% → 100% |  |
| 44 | **陵园** |  |  | 27% → 76% |  |
| 49 | **背景音乐管理** |  |  | 66% → 100% |  |
| 51 | 音乐上传 |  |  | 0% → 100% |  |
| 101 | **人物墓园** | 2016-08-25 → 2016-06-30 (-56d) | 26d → 82d | 0% → 78% |  |
| 102 | 查询人物墓碑集合 |  |  | 0% → 100% |  |
| 103 | 创建人物墓碑 |  |  | 0% → 100% |  |
| 104 | 删除人物墓碑 |  |  | 0% → 100% |  |
| 105 | 墓碑修改（单人升多人、禁止多人降单人） |  |  | 0% → 100% |  |
| 106 | **功能墙** | 2016-08-29 → 2016-06-30 (-60d) | 22d → 82d | 0% → 76% |  |
| 107 | **墓中纪念人** | 2016-08-29 → 2016-06-30 (-60d) | 2d → 62d | 0% → 100% | was named 生平介绍 |
| 108 | 根据陵园墓碑编号查询墓中纪念人 |  |  | 0% → 100% | was named 查询介绍 |
| 109 | 修改纪念人 |  |  | 0% → 100% | was named 修改介绍 |
| 159 | **商城** |  |  | 0% → 42% |  |
| 164 | 加入购物车 |  |  | 0% → 100% |  |
| 165 | 移出购物车 |  |  | 0% → 100% |  |

## Version 10 (saved 2016-10-22)

Note of the change: 调整DB设计，更新工作进度

Last finish stays 2016-09-19. Complete tasks 97 → 113.

Added:

| ID | Task | Duration | Start | Finish |
| --- | --- | --- | --- | --- |
| 118 | 查询留言回复集合 | 1d | 2016-06-30 | 2016-06-30 |

Changed:

| ID | Task | Start | Duration | Complete | Other |
| --- | --- | --- | --- | --- | --- |
| 1 | **百思陵园** |  |  | 90% → 93% |  |
| 7 | **编码** |  |  | 87% → 92% |  |
| 9 | **JAVA** |  |  | 87% → 92% |  |
| 10 | **接口功能** |  |  | 84% → 92% |  |
| 44 | **陵园** |  |  | 76% → 89% |  |
| 101 | **人物墓园** |  |  | 78% → 93% |  |
| 106 | **功能墙** |  |  | 76% → 93% |  |
| 112 | **遗言遗愿** |  |  | 0% → 100% |  |
| 113 | 查询 |  |  | 0% → 100% |  |
| 114 | 添加 |  |  | 0% → 100% |  |
| 115 | 修改 |  |  | 0% → 100% |  |
| 116 | **参祭留言** | 2016-09-02 → 2016-06-30 (-64d) | 2d → 66d | 0% → 100% |  |
| 117 | 分页查询留言集合 |  |  | 0% → 100% | was named 分页查询集合 |
| 119 | 添加留言 |  |  | 0% → 100% |  |
| 120 | 回复留言 |  |  | 0% → 100% |  |
| 121 | 删除留言 |  |  | 0% → 100% |  |
| 122 | **纪念动态** |  |  | 0% → 100% |  |
| 123 | 分页查询列表 |  |  | 0% → 100% |  |
| 124 | 保存纪念动态（提供接口、交由界面触发） |  |  | 0% → 100% |  |
| 125 | **祭文悼词** |  |  | 0% → 100% |  |
| 126 | 分页查询集合 |  |  | 0% → 100% |  |
| 127 | 查询详情 |  |  | 0% → 100% |  |
| 128 | 添加 |  |  | 0% → 100% |  |
| 129 | **人物相册** |  |  | 0% → 42% |  |
| 130 | 查询相册集合 |  |  | 0% → 100% |  |
| 131 | 创建相册 |  |  | 0% → 100% |  |
| 132 | 删除相册 |  |  | 0% → 100% |  |

## Version 11 (saved 2016-10-26)

Note of the change: 更新db设计及进度

Last finish stays 2016-09-19. Complete tasks 113 → 157.

Added:

| ID | Task | Duration | Start | Finish |
| --- | --- | --- | --- | --- |
| 101 | **墓中纪念宠物** | 62d | 2016-06-30 | 2016-08-30 |
| 102 | 根据陵园墓碑编号查询墓中纪念宠物 | 2d | 2016-08-29 | 2016-08-30 |
| 103 | 修改纪念宠物 | 2d | 2016-08-29 | 2016-08-30 |
| 104 | 添加纪念宠物 | 2d | 2016-08-29 | 2016-08-30 |
| 105 | 删除纪念宠物 | 1d | 2016-06-30 | 2016-06-30 |

Changed:

| ID | Task | Finish | Duration | Complete |
| --- | --- | --- | --- | --- |
| 1 | **百思陵园** |  |  | 93% → 96% |
| 7 | **编码** |  |  | 92% → 96% |
| 9 | **JAVA** |  |  | 92% → 96% |
| 10 | **接口功能** |  |  | 92% → 97% |
| 44 | **陵园** |  |  | 89% → 98% |
| 48 | 统计陵园容量消耗明细 |  |  | 0% → 100% |
| 76 | **宠物墓园** | 2016-06-30 → 2016-08-30 (+61d) | 1d → 62d | 0% → 100% |
| 77 | 查询宠物墓碑集合 |  |  | 0% → 100% |
| 78 | 创建宠物墓碑 |  |  | 0% → 100% |
| 79 | 删除宠物墓碑 |  |  | 0% → 100% |
| 80 | 墓碑修改（单人升多人、禁止多人降单人） |  |  | 0% → 100% |
| 81 | **功能墙** | 2016-06-30 → 2016-08-30 (+61d) | 1d → 62d | 0% → 100% |
| 82 | **纪念动态** |  |  | 0% → 100% |
| 83 | 分页查询列表 |  |  | 0% → 100% |
| 84 | 保存纪念动态（提供接口、交由界面触发） |  |  | 0% → 100% |
| 85 | **宠物相册** |  |  | 0% → 100% |
| 86 | 查询相册集合 |  |  | 0% → 100% |
| 87 | 分页查询相片集合 |  |  | 0% → 100% |
| 88 | 查询相片详情 |  |  | 0% → 100% |
| 89 | 创建相册 |  |  | 0% → 100% |
| 90 | 添加相片 |  |  | 0% → 100% |
| 91 | 删除相册 |  |  | 0% → 100% |
| 92 | 删除相片 |  |  | 0% → 100% |
| 93 | **宠物视频** |  |  | 0% → 100% |
| 94 | 查询视频目录集合 |  |  | 0% → 100% |
| 95 | 分页查询视频集合 |  |  | 0% → 100% |
| 96 | 查询视频详情 |  |  | 0% → 100% |
| 97 | 创建视频目录 |  |  | 0% → 100% |
| 98 | 增加视频 |  |  | 0% → 100% |
| 99 | 删除视频目录 |  |  | 0% → 100% |
| 100 | 删除视频 |  |  | 0% → 100% |
| 106 | **人物墓园** |  |  | 93% → 100% |
| 111 | **功能墙** |  |  | 93% → 100% |
| 134 | **人物相册** |  |  | 42% → 100% |
| 138 | 分页查询相片集合 |  |  | 0% → 100% |
| 139 | 查询相片详情 |  |  | 0% → 100% |
| 140 | 添加相片 |  |  | 0% → 100% |
| 141 | 删除相片 |  |  | 0% → 100% |
| 142 | **人物视频** |  |  | 0% → 100% |
| 143 | 查询视频目录集合 |  |  | 0% → 100% |
| 144 | 分页查询视频集合 |  |  | 0% → 100% |
| 145 | 查询视频详情 |  |  | 0% → 100% |
| 146 | 创建视频目录 |  |  | 0% → 100% |
| 147 | 增加视频 |  |  | 0% → 100% |
| 148 | 删除视频目录 |  |  | 0% → 100% |
| 149 | 删除视频 |  |  | 0% → 100% |
| 150 | **生前作品** |  |  | 0% → 100% |
| 151 | 查询作品目录集合 |  |  | 0% → 100% |
| 152 | 分页查询作品集合 |  |  | 0% → 100% |
| 153 | 查询作品详情 |  |  | 0% → 100% |
| 154 | 创建作品目录 |  |  | 0% → 100% |
| 155 | 添加作品 |  |  | 0% → 100% |
| 156 | 删除作品 |  |  | 0% → 100% |
| 157 | 删除作品目录 |  |  | 0% → 100% |
| 173 | **后台功能** |  |  | 92% → 95% |
| 202 | **数据管理** |  |  | 89% → 93% |
| 218 | **特殊节日管理** |  |  | 75% → 100% |
| 222 | 节日前短信推送 |  |  | 0% → 100% |

## Version 12 (saved 2016-11-04)

Note of the change: 更新进度与DB设计

Last finish stays 2016-09-19. Complete tasks 157 → 159.

Changed:

| ID | Task | Complete |
| --- | --- | --- |
| 10 | **接口功能** | 97% → 98% |
| 20 | **我的订单** | 97% → 100% |
| 24 | 订单支付 | 90% → 100% |
| 165 | **商城** | 42% → 57% |
| 172 | 购物车转订单 | 0% → 100% |

## Version 13 (saved 2016-12-12)

Note of the change: 更新DB设计

Last finish stays 2016-09-19. Complete tasks 159 → 166.

Changed:

| ID | Task | Complete |
| --- | --- | --- |
| 7 | **编码** | 96% → 97% |
| 9 | **JAVA** | 96% → 97% |
| 173 | **后台功能** | 95% → 97% |
| 202 | **数据管理** | 93% → 96% |
| 228 | **商城管理** | 0% → 50% |
| 229 | **商品管理** | 0% → 100% |
| 230 | **分页列表查找** | 0% → 100% |
| 231 | 快捷筛选 | 0% → 100% |
| 232 | 内容详情 | 0% → 100% |
| 233 | **增加商品** | 0% → 100% |
| 234 | 绑定模型 | 0% → 100% |
| 235 | 绑定商品分类 | 0% → 100% |
| 236 | **修改商品** | 0% → 100% |
| 237 | 编辑模型 | 0% → 100% |
| 238 | 编辑分类 | 0% → 100% |
| 239 | **删除商品** | 0% → 100% |
| 240 | 删除模型、分类关系 | 0% → 100% |
